# Diplomarbeit

Schedule from Planner, 2018-12-10 to 2019-04-27.

## Calendars

- Default: Mon-Fri 19:00-21:00; Sat off; Sun 08:00-12:00, 13:00-17:00. Exceptions (off unless hours are given): 2018-12-10 to 2018-12-13 19:00-21:00, 2018-12-14, 2018-12-20, 2018-12-22 08:00-12:00, 13:00-17:00, 2018-12-24 19:00-21:00, 2018-12-25 08:00-12:00, 13:00-17:00, 2018-12-26 19:00-21:00, 2018-12-27 to 2018-12-30 08:00-12:00, 13:00-17:00, 2018-12-31 19:00-21:00, 2019-01-01, 2019-01-02 to 2019-01-05 08:00-12:00, 13:00-17:00, 2019-01-14 08:00-12:00, 13:00-17:00, 2019-01-19 08:00-12:00, 13:00-17:00, 2019-01-21 08:00-12:00, 13:00-17:00, 2019-01-26 08:00-12:00, 13:00-17:00, 2019-01-28 08:00-12:00, 13:00-17:00, 2019-02-02 08:00-12:00, 13:00-17:00, 2019-02-04 08:00-12:00, 13:00-17:00, 2019-02-09 08:00-12:00, 13:00-17:00, 2019-02-11 08:00-12:00, 13:00-17:00, 2019-02-18 08:00-12:00, 13:00-17:00, 2019-02-25 08:00-12:00, 13:00-17:00, 2019-03-02 08:00-12:00, 13:00-17:00, 2019-03-04 08:00-12:00, 13:00-17:00, 2019-03-11 08:00-12:00, 13:00-17:00, 2019-03-16 08:00-12:00, 13:00-17:00, 2019-04-27 08:00-12:00, 13:00-17:00.

## Resources

| Resource | Rate |
| --- | --- |
| Andreas Zweili | 60 |

## Schedule

| ID | WBS | Task | Type | Duration | Start | Finish | Predecessors | Constraint | Resources | Work |
| --- | --- | --- | --- | --- | --- | --- | --- | --- | --- | --- |
| 1 | 1 | Start Diplomarbeit | milestone | 0d | 2018-12-10 | 2018-12-10 |  | must start on 2018-12-10 | Andreas Zweili |  |
| 2 | 2 | **Initialisierung** |  |  | 2018-12-10 | 2019-02-09 |  |  |  | 22h |
| 3 | 2.1 | Zeitplan erarbeiten |  |  | 2018-12-10 | 2018-12-12 |  | must start on 2018-12-10 | Andreas Zweili | 5h |
| 4 | 2.2 | Ziele dokumentieren |  |  | 2018-12-12 | 2018-12-16 | 3 |  | Andreas Zweili | 5h |
| 5 | 2.3 | Konfigurationsmanagement beschreiben |  |  | 2019-02-08 | 2019-02-08 | 57 |  | Andreas Zweili | 2h |
| 6 | 2.4 | Projektmethode beschreiben |  |  | 2019-02-09 | 2019-02-09 | 5 |  | Andreas Zweili | 2h |
| 7 | 2.5 | Abgrenzung definieren |  |  | 2018-12-10 | 2018-12-10 |  |  | Andreas Zweili | 2h |
| 8 | 2.6 | **Controlling** |  |  | 2018-12-10 | 2018-12-10 |  |  |  | 6h |
| 9 | 2.6.1 | Zeitmanagement |  |  | 2018-12-10 | 2018-12-10 |  |  | Andreas Zweili | 2h |
| 10 | 2.6.2 | Ressourcen |  |  | 2018-12-10 | 2018-12-10 |  |  | Andreas Zweili | 2h |
| 11 | 2.6.3 | Kosten |  |  | 2018-12-10 | 2018-12-10 |  |  | Andreas Zweili | 2h |
| 12 | 3 | **Analyse** |  |  | 2018-12-10 | 2018-12-29 |  |  |  | 67h |
| 13 | 3.1 | Ist-Analyse erstellen |  |  | 2018-12-10 | 2018-12-13 |  |  |  | 8h |
| 14 | 3.2 | Soll-Analyse erstellen |  |  | 2018-12-10 | 2018-12-13 |  |  |  | 8h |
| 15 | 3.3 | SWOT Analyse erstellen |  |  | 2018-12-10 | 2018-12-12 |  |  | Andreas Zweili | 5h |
| 16 | 3.4 | Stakeholder Diagramm erstellen |  |  | 2018-12-10 | 2018-12-11 |  |  | Andreas Zweili | 3h |
| 17 | 3.5 | **Risikoanalyse erstellen** |  |  | 2018-12-25 | 2018-12-27 |  |  |  | 10h |
| 18 | 3.5.1 | Risiken erfassen |  |  | 2018-12-25 | 2018-12-25 | 65 |  | Andreas Zweili | 4h |
| 19 | 3.5.2 | Risiken bewerten |  |  | 2018-12-25 | 2018-12-25 | 18 |  | Andreas Zweili | 2h |
| 20 | 3.5.3 | Massnahmen Katalog erarbeiten |  |  | 2018-12-25 | 2018-12-27 | 19 |  | Andreas Zweili | 4h |
| 21 | 3.6 | User Stories erarbeiten |  |  | 2018-12-27 | 2018-12-27 | 20 |  | Andreas Zweili | 5h |
| 22 | 3.7 | **Use Cases erarbeiten** |  |  | 2018-12-27 | 2018-12-29 |  |  |  | 12h |
| 23 | 3.7.1 | Use Case Diagramm erstellen |  |  | 2018-12-27 | 2018-12-28 | 21 |  | Andreas Zweili | 4h |
| 24 | 3.7.2 | Use Cases ausarbeiten |  |  | 2018-12-28 | 2018-12-29 | 23 |  | Andreas Zweili | 8h |
| 25 | 3.8 | UML |  |  | 2018-12-10 | 2018-12-13 |  |  |  | 8h |
| 26 | 3.9 | Anforderungskatagol erstellen |  |  | 2018-12-10 | 2018-12-13 |  |  |  | 8h |

| ID | WBS | Task | Duration | Start | Finish | Predecessors | Constraint | Resources | Work |
| --- | --- | --- | --- | --- | --- | --- | --- | --- | --- |
| 27 | 4 | **Konzept** |  | 2018-12-10 | 2019-01-05 |  |  |  | 34h |
| 28 | 4.1 | **Lösungsvariante erarbeiten** | 2.12d | 2018-12-16 | 2018-12-22 |  | start no earlier than 2018-12-10 |  | 17h |
| 29 | 4.1.1 | Lösungsvarianten erfassen |  | 2018-12-16 | 2018-12-16 | 4 |  | Andreas Zweili | 5h |
| 30 | 4.1.2 | Lösungsvarianten bewerten |  | 2018-12-16 | 2018-12-21 | 29 |  | Andreas Zweili | 8h |
| 31 | 4.1.3 | Lösungsvariante bestimmen |  | 2018-12-21 | 2018-12-22 | 30 |  | Andreas Zweili | 4h |
| 32 | 4.2 | **Testing** | 14d | 2018-12-10 | 2019-01-05 |  |  |  | 17h |
| 33 | 4.2.1 | Testkonzept beschreiben |  | 2018-12-10 | 2018-12-12 |  |  |  | 5h |
| 34 | 4.2.2 | Testfälle erstellen |  | 2019-01-03 | 2019-01-05 | 42 |  | Andreas Zweili | 12h |
| 35 | 5 | **Realisierung** |  | 2018-12-29 | 2019-02-07 |  |  |  | 172h |
| 36 | 5.1 | Github Repository erstellen |  | 2019-01-05 | 2019-01-05 | 34 |  | Andreas Zweili | 2h |
| 37 | 5.2 | **UI** |  | 2018-12-29 | 2019-01-03 |  |  |  | 30h |
| 38 | 5.2.1 | UI ausarbeiten |  | 2018-12-30 | 2018-12-31 | 39 |  | Andreas Zweili | 8h |
| 39 | 5.2.2 | UI Test ausarbeiten |  | 2018-12-29 | 2018-12-30 | 24 |  | Andreas Zweili | 8h |
| 40 | 5.2.3 | UI von Usern testen lassen |  | 2019-01-02 | 2019-01-02 | 38 |  | Andreas Zweili | 5h |
| 41 | 5.2.4 | UI Test Resultate auswerten |  | 2019-01-02 | 2019-01-03 | 40 |  | Andreas Zweili | 4h |
| 42 | 5.2.5 | UI anpassen |  | 2019-01-03 | 2019-01-03 | 41 |  | Andreas Zweili | 5h |
| 43 | 5.3 | **Coding** |  | 2019-01-05 | 2019-02-03 |  |  |  | 120h |
| 44 | 5.3.1 | Backend Read Config Funktion |  | 2019-01-05 | 2019-01-06 | 36 |  | Andreas Zweili | 8h |
| 45 | 5.3.2 | Frontend Read Config Funktion |  | 2019-01-06 | 2019-01-08 | 44 |  | Andreas Zweili | 8h |
| 46 | 5.3.3 | Backend Write Config Funktion |  | 2019-01-09 | 2019-01-13 | 45 |  | Andreas Zweili | 8h |
| 47 | 5.3.4 | Frontend Write Config Funktion |  | 2019-01-13 | 2019-01-14 | 46 |  | Andreas Zweili | 8h |
| 48 | 5.3.5 | Backend Backup Funktion |  | 2019-01-14 | 2019-01-15 | 47 |  | Andreas Zweili | 8h |
| 49 | 5.3.6 | Frontend Backup Funktion |  | 2019-01-16 | 2019-01-19 | 48 |  | Andreas Zweili | 8h |
| 50 | 5.3.7 | Backend Restore Funktion |  | 2019-01-19 | 2019-01-20 | 49 |  | Andreas Zweili | 8h |
| 51 | 5.3.8 | Frontend Restore Funktion |  | 2019-01-20 | 2019-01-21 | 50 |  | Andreas Zweili | 8h |
| 52 | 5.3.9 | Backend Mounting Funktion |  | 2019-01-21 | 2019-01-22 | 51 |  | Andreas Zweili | 8h |
| 53 | 5.3.10 | Frontend Mounting Funktion |  | 2019-01-23 | 2019-01-26 | 52 |  | Andreas Zweili | 8h |
| 54 | 5.3.11 | Backend Delete Funktion |  | 2019-01-26 | 2019-01-27 | 53 |  | Andreas Zweili | 8h |
| 55 | 5.3.12 | Frontend Delete Funktion |  | 2019-01-27 | 2019-01-28 | 54 |  | Andreas Zweili | 8h |
| 56 | 5.3.13 | Coding Filler |  | 2019-01-28 | 2019-02-03 | 55 |  | Andreas Zweili | 24h |
| 57 | 5.4 | Testfälle anwenden |  | 2019-02-03 | 2019-02-07 | 56 |  |  | 20h |

| ID | WBS | Task | Type | Duration | Start | Finish | Predecessors | Constraint | Resources | Work |
| --- | --- | --- | --- | --- | --- | --- | --- | --- | --- | --- |
| 58 | 6 | **Ausblick** |  |  | 2018-12-10 | 2018-12-11 |  |  |  | 8h |
| 59 | 6.1 | Gelerntes erfassen |  |  | 2018-12-10 | 2018-12-11 |  |  | Andreas Zweili | 4h |
| 60 | 6.2 | Allgemeines Fazit |  |  | 2018-12-10 | 2018-12-10 |  |  | Andreas Zweili | 2h |
| 61 | 6.3 | Risiken Anhand der Arbeit bewerten |  |  | 2018-12-10 | 2018-12-10 |  |  | Andreas Zweili | 2h |
| 62 | 7 | Arbeit korrigieren |  |  | 2019-03-04 | 2019-03-10 |  | start no earlier than 2019-03-04 | Andreas Zweili | 20h |
| 63 | 8 | **Meeting #1** |  | 1.38d | 2018-12-23 | 2018-12-25 |  | must start on 2018-12-23 |  | 5h |
| 64 | 8.1 | Meeting abhalten |  |  | 2018-12-23 | 2018-12-23 |  | must start on 2018-12-23 |  | 2h |
| 65 | 8.2 | Nacharbeiten |  |  | 2018-12-24 | 2018-12-25 |  | must start on 2018-12-24 | Andreas Zweili | 3h |
| 66 | 9 | **Meeting #2** |  | 1.38d | 2019-01-26 | 2019-01-27 |  | must start on 2019-01-26 |  | 5h |
| 67 | 9.1 | Meeting abhalten |  |  | 2019-01-26 | 2019-01-26 |  | must start on 2019-01-26 | Andreas Zweili | 2h |
| 68 | 9.2 | Nacharbeiten |  |  | 2019-01-27 | 2019-01-27 |  | must start on 2019-01-27 | Andreas Zweili | 3h |
| 69 | 10 | **Meeting #3** |  | 0.62d | 2019-02-28 | 2019-03-02 |  | must start on 2019-02-28 |  | 5h |
| 70 | 10.1 | Meeting abhalten |  |  | 2019-02-28 | 2019-02-28 |  | must start on 2019-02-28 | Andreas Zweili | 2h |
| 71 | 10.2 | Nacharbeiten |  |  | 2019-03-01 | 2019-03-02 |  | must start on 2019-03-01 | Andreas Zweili | 3h |
| 72 | 11 | Diplomarbeit abgeben | milestone | 0d | 2019-03-18 | 2019-03-18 |  | must start on 2019-03-18 | Andreas Zweili [0%] |  |
| 73 | 12 | Präsentation | milestone | 0d | 2019-04-02 | 2019-04-02 | 72 | start no earlier than 2019-04-02 | Andreas Zweili |  |
| 74 | 13 | **Ausstellung** |  |  | 2019-03-31 | 2019-04-26 |  | must start on 2019-04-27 |  | 24h |
| 75 | 13.1 | Ausstellung vorbereiten |  | 9d | 2019-03-31 | 2019-04-26 |  | start no earlier than 2019-03-31 |  | 24h |
| 76 | 13.2 | Arbeit ausstellen | milestone | 0d | 2019-04-27 | 2019-04-27 |  | must start on 2019-04-27 | Andreas Zweili |  |
